# Proyecto EcoAlerta - Plan y Cronograma de Testing

Schedule from MS Project, 2026-08-25 to 2026-11-20, status date 2026-11-01, A marks actual dates.
FOM

## Calendars

- Estándar: Mon-Fri 09:00-13:00, 15:00-19:00; Sat-Sun off.

## Resources

| Resource |
| --- |
| An Procesos |
| Referente Perforación |
| Referente Pulling |
| Referente Workover |
| QA |
| GF |
| MV |
| Lider Referente Técnico Otras UG |
| Lider Referente Técnico GSJ |
| SPA |
| CMO |
| PMO |
| Eduardo Salvador |
| Manuel Vila |
| Pedro Franko |
| LOGISTICA |
| OPER & TELCO |
| PROVEEDOR Assesment |
| SEGINF |
| TECNOLOGIA |
| Maximiliano Cordoba |
| Gustavo Scarafia |
| Aceco TI |
| Manuel Vila; Ariel Marin |
| Rodriguez Iván |
| Equipo Completo |
| Rodriguez / Kuhn / Benitez A / Escobar |
| Kuhn Joaquin |
| Benitez Angel |
| Rodriguez Iván / Benitez Angel |
| Escobar Raul / Benitez Facundo |
| Rodriguez / Kuhn / Benitez F |
| Kuhn Joaquin / Rodriguez Iván |
| Rodriguez Iván / Kuhn Joaquin |
| Benitez Facundo / Escobar Raul |
| Benitez A / Escobar / Rodriguez |
| Escobar Raul |
| Benitez Angel / Rodriguez Iván |
| Escobar Raul / Rodriguez Iván |
| Benitez Facundo |
| Rodriguez Iván (FrontEnd) |
| Benitez Angel (BackEnd) |
| Benitez F / Rodriguez / Angel / Kuhn |
| Kuhn Joaquin / Benitez Facundo |
| Equipo Completo / Mg. Pedro Brest |
| Mg. Pedro Brest |

## Schedule

| ID | WBS | Task | Type | Duration | Start | Finish | Predecessors | Complete | Remaining | Baseline start | Baseline finish | Baseline duration | Total slack | Constraint | Resources | Work | Actual work | Costos |
| --- | --- | --- | --- | --- | --- | --- | --- | --- | --- | --- | --- | --- | --- | --- | --- | --- | --- | --- |
| 1 | 1 | **Proyecto EcoAlerta - Ciclo de Vida y Testware de Calidad** |  | 63.5d? | 2026-08-25 A | 2026-11-20 |  | 99% | 0.64d? | 2026-08-25 | 2026-11-20 | 63.5d? | 0d |  | Equipo Completo | 1223h | 1208.68h |  |
| 2 | 1.1 | **FASE 1: Setup Arquitectura y Prototipos UI/UX** |  | 10.88d? | 2026-08-25 A | 2026-09-08 A |  | 100% |  | 2026-08-25 | 2026-09-08 | 10.88d? |  |  | Rodriguez / Kuhn / Benitez A / Escobar | 165h | 165h |  |
| 3 | 1.1.1 | Setup inicial y arquitectura client/server monorepo |  | 3.88d | 2026-08-25 A | 2026-08-28 A |  | 100% |  | 2026-08-25 | 2026-08-28 | 3.88d |  | finish no earlier than 2026-08-28 | Rodriguez Iván | 31h | 31h |  |
| 4 | 1.1.2 | Wireframes y maquetacion UI/UX HomeScreen inicial |  | 3d | 2026-08-28 A | 2026-09-02 A | 3 | 100% |  | 2026-08-28 | 2026-09-02 | 3d |  | finish no earlier than 2026-08-30 | Kuhn Joaquin | 24h | 24h |  |
| 5 | 1.1.3 | Setup Backend Express TypeScript y Prisma ORM |  | 2.88d | 2026-08-28 A | 2026-09-02 A | 3 | 100% |  | 2026-08-28 | 2026-09-02 | 2.88d |  | finish no earlier than 2026-08-31 | Benitez Angel | 23h | 23h |  |
| 6 | 1.1.4 | Contexto de Carrito y navegacion inicial |  | 2.88d | 2026-09-02 A | 2026-09-07 A | 5 | 100% |  | 2026-09-02 | 2026-09-07 | 2.88d |  | finish no earlier than 2026-09-02 | Rodriguez Iván / Benitez Angel | 23h | 23h |  |
| 7 | 1.1.5 | Estandares Scrum y alineacion de calidad |  | 4d | 2026-09-02 A | 2026-09-08 A | 4 | 100% |  | 2026-09-02 | 2026-09-08 | 4d |  | finish no earlier than 2026-09-05 | Escobar Raul / Benitez Facundo | 32h | 32h |  |
| 8 | 1.1.6 | Hito 1: Cimientos de Arquitectura y UI Aprobados | milestone | 0d? | 2026-09-08 A | 2026-09-08 A | 7 | 100% |  | 2026-09-08 | 2026-09-08 | 0d? |  | start no earlier than 2026-09-07 | Equipo Completo |  |  | HC |
| 9 | 1.2 | **FASE 2: Desarrollo Core Frontend y Modulos Base** |  | 21.5d? | 2026-09-08 A | 2026-10-08 A |  | 100% |  | 2026-09-08 | 2026-10-08 | 21.5d? |  |  | Rodriguez / Kuhn / Benitez F | 376h | 376h |  |
| 10 | 1.2.1 | Pantallas Perfil y MasScreen con mockups |  | 3.88d | 2026-09-08 A | 2026-09-14 A | 8 | 100% |  | 2026-09-08 | 2026-09-14 | 3.88d |  | finish no earlier than 2026-09-11 | Rodriguez Iván | 31h | 31h |  |
| 11 | 1.2.2 | Modulo Operativo Agente de Campo y vistas |  | 4d | 2026-09-08 A | 2026-09-14 A | 8 | 100% |  | 2026-09-08 | 2026-09-14 | 4d |  | finish no earlier than 2026-09-13 | Rodriguez Iván | 32h | 32h |  |
| 12 | 1.2.3 | Integracion camara nativa Expo y selector galeria |  | 3d | 2026-09-14 A | 2026-09-17 A | 10 | 100% |  | 2026-09-14 | 2026-09-17 | 3d |  | finish no earlier than 2026-09-13 | Kuhn Joaquin / Rodriguez Iván | 24h | 24h |  |
| 13 | 1.2.4 | Refinamiento visual UI de Tienda y Carrito |  | 3.88d | 2026-09-17 A | 2026-09-23 A | 12 | 100% |  | 2026-09-17 | 2026-09-23 | 3.88d |  | finish no earlier than 2026-09-16 | Kuhn Joaquin | 31h | 31h |  |
| 14 | 1.2.5 | Integracion Home Administrador Municipal |  | 6.88d | 2026-09-23 A | 2026-10-02 A | 13 | 100% |  | 2026-09-23 | 2026-10-02 | 6.88d |  | finish no earlier than 2026-09-29 | Rodriguez Iván / Kuhn Joaquin | 55h | 55h |  |
| 15 | 1.2.6 | Revision de usabilidad y pruebas exploratorias |  | 3.88d | 2026-10-02 A | 2026-10-08 A | 14 | 100% |  | 2026-10-02 | 2026-10-08 | 3.88d |  | finish no earlier than 2026-09-30 | Benitez Facundo / Escobar Raul | 31h | 31h |  |
| 16 | 1.2.7 | Hito 2: Interfaces Core y Mockups Integrados | milestone | 0d? | 2026-10-08 A | 2026-10-08 A | 15 | 100% |  | 2026-10-08 | 2026-10-08 | 0d? |  | start no earlier than 2026-09-30 | Equipo Completo |  |  | HC |
| 17 | 1.3 | **FASE 3: Especificacion Formal SDD Base de Datos y Backend** |  | 14.75d? | 2026-10-08 A | 2026-10-29 A |  | 100% |  | 2026-10-08 | 2026-10-29 | 14.75d? |  |  | Benitez A / Escobar / Rodriguez | 252h | 252h |  |
| 18 | 1.3.1 | Migracion a Supabase PostgreSQL y Prisma ORM |  | 9.88d | 2026-10-08 A | 2026-10-22 A | 16 | 100% |  | 2026-10-08 | 2026-10-22 | 9.88d |  | finish no earlier than 2026-10-14 | Benitez Angel | 79h | 79h |  |
| 19 | 1.3.2 | Adopcion Spec-Driven Development y Backlog HU |  | 1.88d | 2026-10-22 A | 2026-10-26 A | 18 | 100% |  | 2026-10-22 | 2026-10-26 | 1.88d |  | finish no earlier than 2026-10-15 | Escobar Raul | 15h | 15h |  |
| 20 | 1.3.3 | Endpoints REST Triaje Asignacion y Concurrencia |  | 2d | 2026-10-26 A | 2026-10-28 A | 19 | 100% |  | 2026-10-26 | 2026-10-28 | 2d |  | finish no earlier than 2026-10-18 | Benitez Angel | 16h | 16h |  |
| 21 | 1.3.4 | Integracion Servicios REST y Cliente Movil |  | 2d | 2026-10-26 A | 2026-10-28 A | 19 | 100% |  | 2026-10-26 | 2026-10-28 | 2d |  | finish no earlier than 2026-10-18 | Rodriguez Iván | 16h | 16h |  |
| 22 | 1.3.5 | Acreditacion de Puntos Saneamiento y Canjes |  | 1d | 2026-10-28 A | 2026-10-29 A | 20 | 100% |  | 2026-10-28 | 2026-10-29 | 1d |  | finish no earlier than 2026-10-18 | Benitez Angel / Rodriguez Iván | 8h | 8h |  |
| 23 | 1.3.6 | Hito 3: Backend Supabase y Modulos 001-006 Conectados | milestone | 0d? | 2026-10-29 A | 2026-10-29 A | 22 | 100% |  | 2026-10-29 | 2026-10-29 | 0d? |  | start no earlier than 2026-10-18 | Equipo Completo |  |  | HC |
| 24 | 1.4 | **FASE 4: Finalizacion de Modulos Testware y Correccion Bugs** |  | 12.25d? | 2026-10-29 A | 2026-11-16 A |  | 100% |  | 2026-10-29 | 2026-11-16 | 12.25d? |  |  | Equipo Completo | 226h | 226h |  |
| 25 | 1.4.1 | Cierre Modulo 001 Auth RBAC y Logout Seguro |  | 2.88d | 2026-10-29 A | 2026-11-02 A | 23 | 100% |  | 2026-10-29 | 2026-11-02 | 2.88d |  | finish no earlier than 2026-10-21 | Rodriguez Iván / Benitez Angel | 23h | 23h |  |
| 26 | 1.4.2 | Cierre Modulo 002 Reporte Ciudadano y GPS |  | 3d | 2026-11-03 A | 2026-11-05 A | 25 | 100% |  | 2026-11-03 | 2026-11-05 | 3d |  | finish no earlier than 2026-10-24 | Rodriguez Iván / Kuhn Joaquin | 24h | 24h | AD |
| 27 | 1.4.3 | Upgrade Expo SDK 58 y Resiliencia de Red |  | 0.88d | 2026-11-06 A | 2026-11-06 A | 26 | 100% |  | 2026-11-06 | 2026-11-06 | 0.88d |  | finish no earlier than 2026-10-26 | Escobar Raul / Rodriguez Iván | 7h | 7h | AD |
| 28 | 1.4.4 | Plan Maestro de Testing IEEE 829 y Matriz RTM |  | 1.88d | 2026-11-06 A | 2026-11-10 A | 27 | 100% |  | 2026-11-06 | 2026-11-10 | 1.88d |  | finish no earlier than 2026-10-27 | Escobar Raul / Benitez Facundo | 15h | 15h | AD |
| 29 | 1.4.5 | Diseno de 67 Casos de Prueba Detallados |  | 1.88d | 2026-11-06 A | 2026-11-10 A | 27 | 100% |  | 2026-11-06 | 2026-11-10 | 1.88d |  | finish no earlier than 2026-10-27 | Benitez Facundo | 15h | 15h | AD |
| 30 | 1.4.6 | Correccion de BUG-101 en Compresion de Imagen |  | 1.88d | 2026-11-10 A | 2026-11-12 A | 29 | 100% |  | 2026-11-10 | 2026-11-12 | 1.88d |  | finish no earlier than 2026-10-28 | Rodriguez Iván (FrontEnd) | 15h | 15h | AD |
| 31 | 1.4.7 | Correccion de BUG-102 en Reserva Stock Concurrente |  | 1.88d | 2026-11-10 A | 2026-11-12 A | 29 | 100% |  | 2026-11-10 | 2026-11-12 | 1.88d |  | finish no earlier than 2026-10-28 | Benitez Angel (BackEnd) | 15h | 15h | AD |
| 32 | 1.4.8 | Modulo 007 Alta Personal Municipal y Foto Camara |  | 0.88d | 2026-11-12 A | 2026-11-13 A | 31 | 100% |  | 2026-11-12 | 2026-11-13 | 0.88d |  | finish no earlier than 2026-10-28 | Rodriguez Iván / Benitez Angel | 7h | 7h | AD |
| 33 | 1.4.9 | Modulo 007 Gestion Colaboradores y Baja Transaccional |  | 0.88d | 2026-11-13 A | 2026-11-16 A | 32 | 100% |  | 2026-11-13 | 2026-11-16 | 0.88d |  | finish no earlier than 2026-10-28 | Benitez Angel / Rodriguez Iván | 7h | 7h | AD |
| 34 | 1.4.10 | Hito 4: Testware y Defectos 100% Corregidos | milestone | 0d? | 2026-11-12 A | 2026-11-12 A | 30 | 100% |  | 2026-11-12 | 2026-11-12 | 0d? |  | start no earlier than 2026-10-28 | Equipo Completo |  |  | HC |

| ID | WBS | Task | Type | Duration | Start | Finish | Predecessors | Complete | Remaining | Baseline start | Baseline finish | Baseline duration | Total slack | Constraint | Resources | Work | Actual work | Costos |
| --- | --- | --- | --- | --- | --- | --- | --- | --- | --- | --- | --- | --- | --- | --- | --- | --- | --- | --- |
| 35 | 1.5 | **FASE 5: Ejecucion de Pruebas E2E Regresion y Modulo 008** |  | 5.88d? | 2026-11-12 A | 2026-11-20 A |  | 100% |  | 2026-11-12 | 2026-11-20 | 5.88d? |  |  | Benitez F / Rodriguez / Angel / Kuhn | 110h | 110h | AD |
| 36 | 1.5.1 | Modulo 008 Onboarding 3 Tarjetas Categorias y Storage |  | 2d | 2026-11-12 A | 2026-11-16 A | 34 | 100% |  | 2026-11-12 | 2026-11-16 | 2d |  | finish no earlier than 2026-10-31 | Rodriguez Iván / Benitez Angel | 16h | 16h | AD |
| 37 | 1.5.2 | Ejecucion de Suites E2E y Pruebas de Regresion (146 tests) |  | 2.88d | 2026-11-12 A | 2026-11-17 A | 34 | 100% |  | 2026-11-12 | 2026-11-17 | 2.88d |  | finish no earlier than 2026-10-30 | Benitez Facundo | 23h | 23h | AD |
| 38 | 1.5.3 | Validacion Integral Flujo Completo Admin-Agente-Colaborador |  | 2d | 2026-11-17 A | 2026-11-19 A | 37 | 100% |  | 2026-11-17 | 2026-11-19 | 2d |  | finish no earlier than 2026-10-31 | Rodriguez Iván / Benitez Angel | 16h | 16h | AD |
| 39 | 1.5.4 | Revision de Usabilidad y Feedback Visual en Dispositivo |  | 1d | 2026-11-19 A | 2026-11-20 A | 38 | 100% |  | 2026-11-19 | 2026-11-20 | 1d |  | finish no earlier than 2026-10-31 | Kuhn Joaquin / Benitez Facundo | 8h | 8h | AD |
| 40 | 1.5.5 | Hito 5: Pruebas E2E, Regresion y Modulos Conformes | milestone | 0d? | 2026-11-16 A | 2026-11-16 A | 36 | 100% |  | 2026-11-16 | 2026-11-16 | 0d? |  | start no earlier than 2026-10-31 | Equipo Completo |  |  | HC |
| 41 | 1.6 | **FASE 6: Certificacion ISO 25010 y Entrega Final Academica** |  | 3.88d? | 2026-11-16 A | 2026-11-20 |  | 77% | 0.88d? | 2026-11-16 | 2026-11-20 | 3.88d? | 0d |  | Equipo Completo | 62h | 48h | AD |
| 42 | 1.6.1 | Evaluacion Checklists ISO 25010 y Peer Review |  | 2d | 2026-11-16 A | 2026-11-18 A | 40 | 100% |  | 2026-11-16 | 2026-11-18 | 2d |  | finish no earlier than 2026-11-01 | Equipo Completo | 16h | 16h | AD |
| 43 | 1.6.2 | Consolidacion de Testware Final Storyboard y Excel en Drive |  | 1d | 2026-11-18 A | 2026-11-19 A | 42 | 100% |  | 2026-11-18 | 2026-11-19 | 1d |  | finish no earlier than 2026-11-01 | Escobar Raul / Benitez Facundo | 8h | 8h | AD |
| 44 | 1.6.3 | Presentacion y Entrega Final ante la Catedra |  | 0.88d | 2026-11-19 | 2026-11-20 | 43 |  |  | 2026-11-19 | 2026-11-20 | 0.88d | 0d | finish no earlier than 2026-11-02 | Equipo Completo / Mg. Pedro Brest | 7h |  | NC |
| 45 | 1.6.4 | Hito 6: Dictamen de Aprobacion de Calidad de Software | milestone | 0d? | 2026-11-20 | 2026-11-20 | 44 |  |  | 2026-11-20 | 2026-11-20 | 0d? | 0d | start no earlier than 2026-11-02 | Mg. Pedro Brest |  |  | HP |
